# ChildrenGuard

Schedule from MS Project, 2014-09-15 to 2014-12-17.
3M

## Calendars

- 标准: Mon-Fri 08:00-12:00, 13:00-17:00; Sat-Sun off.

## Schedule

| ID | WBS | Task | Duration | Start | Finish | Predecessors | Total slack | Constraint |
| --- | --- | --- | --- | --- | --- | --- | --- | --- |
| 1 | 1 | **守护者** | 67.5d | 2014-09-15 08:00 | 2014-12-17 12:00 |  | 0d |  |
| 2 | 1.1 | 项目框架及基础代码 | 2d | 2014-09-15 08:00 | 2014-09-16 17:00 |  | 0d | start no earlier than 2014-09-15 08:00 |
| 3 | 1.2 | **Android端** | 35d | 2014-09-17 08:00 | 2014-11-04 17:00 |  | 0d |  |
| 4 | 1.2.1 | **UI** | 10d | 2014-09-17 08:00 | 2014-09-30 17:00 | 2 | 0d |  |
| 5 | 1.2.1.1 | UI设计 | 5d | 2014-09-17 08:00 | 2014-09-23 17:00 |  | 0d |  |
| 6 | 1.2.1.2 | UI开发 | 5d | 2014-09-24 08:00 | 2014-09-30 17:00 | 5 | 0d |  |
| 7 | 1.2.2 | **监控端(家长)** | 14.5d | 2014-10-01 08:00 | 2014-10-21 12:00 | 4 | 0d |  |
| 8 | 1.2.2.1 | 基础代码 | 2d | 2014-10-01 08:00 | 2014-10-02 17:00 |  | 0d |  |
| 9 | 1.2.2.2 | 后台服务（连接控制） | 2d | 2014-10-03 08:00 | 2014-10-06 17:00 | 8 | 0d |  |
| 10 | 1.2.2.3 | 注册、登录（包括自动登录）、找回密码 | 2d | 2014-10-07 08:00 | 2014-10-08 17:00 | 9 | 0d |  |
| 11 | 1.2.2.4 | 首次登陆法律协议 | 0.5d | 2014-10-09 08:00 | 2014-10-09 12:00 | 10 | 0d |  |
| 12 | 1.2.2.5 | 通用提醒 | 1d | 2014-10-09 13:00 | 2014-10-10 12:00 | 11 | 0d |  |
| 13 | 1.2.2.6 | **子机管理** | 7d | 2014-10-10 13:00 | 2014-10-21 12:00 | 12 | 0d |  |
| 14 | 1.2.2.6.1 | 状态查询/手动同步 | 1d | 2014-10-10 13:00 | 2014-10-13 12:00 |  | 0d |  |
| 15 | 1.2.2.6.2 | App管理（安装/下载） | 2d | 2014-10-13 13:00 | 2014-10-15 12:00 | 14 | 0d |  |
| 16 | 1.2.2.6.3 | 通讯录管理 | 2d | 2014-10-15 13:00 | 2014-10-17 12:00 | 15 | 0d |  |
| 17 | 1.2.2.6.4 | 通用设置管理 | 2d | 2014-10-17 13:00 | 2014-10-21 12:00 | 16 | 0d |  |
| 18 | 1.2.3 | **被监控端(孩子)** | 10.5d | 2014-10-21 13:00 | 2014-11-04 17:00 | 7 | 0d |  |
| 19 | 1.2.3.1 | 基础代码 | 2d | 2014-10-21 13:00 | 2014-10-23 12:00 |  | 0d |  |
| 20 | 1.2.3.2 | 后台服务 | 2d | 2014-10-23 13:00 | 2014-10-27 12:00 | 19 | 0d |  |
| 21 | 1.2.3.3 | 锁定控制 | 2d | 2014-10-27 13:00 | 2014-10-29 12:00 | 20 | 0d |  |
| 22 | 1.2.3.4 | 登录 | 0.5d | 2014-10-29 13:00 | 2014-10-29 17:00 | 21 | 0d |  |
| 23 | 1.2.3.5 | 锁定密码界面 | 1d | 2014-10-30 08:00 | 2014-10-30 17:00 | 22 | 0d |  |
| 24 | 1.2.3.6 | 信息(app、通讯录、位置等)同步 | 2d | 2014-10-31 08:00 | 2014-11-03 17:00 | 23 | 0d |  |
| 25 | 1.2.3.7 | 提醒通知 | 1d | 2014-11-04 08:00 | 2014-11-04 17:00 | 24 | 0d |  |

| ID | WBS | Task | Duration | Start | Finish | Predecessors | Total slack |
| --- | --- | --- | --- | --- | --- | --- | --- |
| 26 | 1.3 | **server端** | 27.5d | 2014-11-05 08:00 | 2014-12-12 12:00 | 3 | 0d |
| 27 | 1.3.1 | 基础代码 | 2d | 2014-11-05 08:00 | 2014-11-06 17:00 |  | 0d |
| 28 | 1.3.2 | 连接池逻辑 | 4d | 2014-11-07 08:00 | 2014-11-12 17:00 | 27 | 0d |
| 29 | 1.3.3 | App下载控制(有效期下载) | 0.5d | 2014-11-13 08:00 | 2014-11-13 12:00 | 28 | 0d |
| 30 | 1.3.4 | **母机部分** | 11d | 2014-11-13 13:00 | 2014-11-28 12:00 | 29 | 0d |
| 31 | 1.3.4.1 | 法律协议接口 | 0.5d | 2014-11-13 13:00 | 2014-11-13 17:00 |  | 0d |
| 32 | 1.3.4.2 | 注册、登录、找回密码接口 | 2d | 2014-11-14 08:00 | 2014-11-17 17:00 | 31 | 0d |
| 33 | 1.3.4.3 | **子机管理接口** | 5.5d | 2014-11-18 08:00 | 2014-11-25 12:00 | 32 | 0d |
| 34 | 1.3.4.3.1 | 添加子机接口 | 0.5d | 2014-11-18 08:00 | 2014-11-18 12:00 |  | 0d |
| 35 | 1.3.4.3.2 | 子机app列表接口 | 0.5d | 2014-11-18 13:00 | 2014-11-18 17:00 | 34 | 0d |
| 36 | 1.3.4.3.3 | 子机app锁定/解锁接口 | 0.5d | 2014-11-19 08:00 | 2014-11-19 12:00 | 35 | 0d |
| 37 | 1.3.4.3.4 | 子机app流量查询接口 | 0.5d | 2014-11-19 13:00 | 2014-11-19 17:00 | 36 | 0d |
| 38 | 1.3.4.3.5 | 子机app网络开关接口 | 0.5d | 2014-11-20 08:00 | 2014-11-20 12:00 | 37 | 0d |
| 39 | 1.3.4.3.6 | 子机所下载app列表接口 | 0.5d | 2014-11-20 13:00 | 2014-11-20 17:00 | 38 | 0d |
| 40 | 1.3.4.3.7 | 子机位置、速度查询接口 | 0.5d | 2014-11-21 08:00 | 2014-11-21 12:00 | 39 | 0d |
| 41 | 1.3.4.3.8 | 子机通讯录查询接口 | 0.5d | 2014-11-21 13:00 | 2014-11-21 17:00 | 40 | 0d |
| 42 | 1.3.4.3.9 | 子机通讯录预设锁定模式接口 | 0.5d | 2014-11-24 08:00 | 2014-11-24 12:00 | 41 | 0d |
| 43 | 1.3.4.3.10 | 子机定时锁定接口 | 0.5d | 2014-11-24 13:00 | 2014-11-24 17:00 | 42 | 0d |
| 44 | 1.3.4.3.11 | 子机锁定/解锁接口 | 0.5d | 2014-11-25 08:00 | 2014-11-25 12:00 | 43 | 0d |
| 45 | 1.3.4.4 | **通用设置接口** | 2.5d | 2014-11-25 13:00 | 2014-11-27 17:00 | 33 | 0d |
| 46 | 1.3.4.4.1 | 子机app密码设置/修改 | 0.5d | 2014-11-25 13:00 | 2014-11-25 17:00 |  | 0d |
| 47 | 1.3.4.4.2 | **提示信息设置** | 2d | 2014-11-26 08:00 | 2014-11-27 17:00 | 46 | 0d |
| 48 | 1.3.4.4.2.1 | 添加/删除app通知 | 0.5d | 2014-11-26 08:00 | 2014-11-26 12:00 |  | 0d |
| 49 | 1.3.4.4.2.2 | 流量超额提醒 | 0.5d | 2014-11-26 13:00 | 2014-11-26 17:00 | 48 | 0d |
| 50 | 1.3.4.4.2.3 | 子机超速提醒 | 0.5d | 2014-11-27 08:00 | 2014-11-27 12:00 | 49 | 0d |
| 51 | 1.3.4.4.2.4 | 子机锁定/解锁提醒 | 0.5d | 2014-11-27 13:00 | 2014-11-27 17:00 | 50 | 0d |
| 52 | 1.3.4.5 | 多终端同帐号登录 | 0.5d | 2014-11-28 08:00 | 2014-11-28 12:00 | 51 | 10d |

| ID | WBS | Task | Duration | Start | Finish | Predecessors | Total slack |
| --- | --- | --- | --- | --- | --- | --- | --- |
| 53 | 1.3.5 | **子机部分** | 3.5d | 2014-11-28 08:00 | 2014-12-03 12:00 | 47 | 0d |
| 54 | 1.3.5.1 | 注册、登录接口 | 0.5d | 2014-11-28 08:00 | 2014-11-28 12:00 |  | 0d |
| 55 | 1.3.5.2 | **状态同步接口** | 3d | 2014-11-28 13:00 | 2014-12-03 12:00 | 54 | 0d |
| 56 | 1.3.5.2.1 | app列表接口 | 0.5d | 2014-11-28 13:00 | 2014-11-28 17:00 |  | 0d |
| 57 | 1.3.5.2.2 | 流量接口 | 0.5d | 2014-12-01 08:00 | 2014-12-01 12:00 | 56 | 0d |
| 58 | 1.3.5.2.3 | 下载app接口 | 0.5d | 2014-12-01 13:00 | 2014-12-01 17:00 | 57 | 0d |
| 59 | 1.3.5.2.4 | 位置、速度上传接口 | 0.5d | 2014-12-02 08:00 | 2014-12-02 12:00 | 58 | 0d |
| 60 | 1.3.5.2.5 | 通讯录接口 | 0.5d | 2014-12-02 13:00 | 2014-12-02 17:00 | 59 | 0d |
| 61 | 1.3.5.2.6 | 其他接口 | 0.5d | 2014-12-03 08:00 | 2014-12-03 12:00 | 60 | 0d |
| 62 | 1.3.6 | **计费系统** | 7d | 2014-12-03 13:00 | 2014-12-12 12:00 | 53 | 0d |
| 63 | 1.3.6.1 | 费用统计 | 3d | 2014-12-03 13:00 | 2014-12-08 12:00 |  | 0d |
| 64 | 1.3.6.2 | 帐号禁用/解禁 | 1d | 2014-12-08 13:00 | 2014-12-09 12:00 | 63 | 0d |
| 65 | 1.3.6.3 | 其他 | 3d | 2014-12-09 13:00 | 2014-12-12 12:00 | 64 | 0d |
| 66 | 1.4 | 测试 | 2d | 2014-12-12 13:00 | 2014-12-16 12:00 | 26 | 0d |
| 67 | 1.5 | 部署 | 1d | 2014-12-16 13:00 | 2014-12-17 12:00 | 66 | 0d |
